# SistemaInformatico

Schedule from MS Project, 2016-03-01 to 2016-05-27, costs in S/..
Toshiba

## Calendars

- Calendario Sistema Informático: Mon-Sat 09:00-13:00, 15:00-19:00; Sun off. Exceptions (off unless hours are given): 2016-03-24 to 2016-03-26 (Feriado por semana santa).

## Resources

| Resource | Unit | Rate | Cost per use |
| --- | --- | --- | --- |
| Ing. De Sistemas |  | 50 |  |
| Analista |  | 40 |  |
| Programador Senior |  | 40 |  |
| Programador Junior |  | 30 |  |
| Operador |  | 25 |  |
| Digitador |  | 20 |  |
| Asistente |  | 20 |  |
| Computador 1 |  | 15 |  |
| Computador 2 |  | 15 |  |
| Computador 3 |  | 15 |  |
| Computador 4 |  | 10 |  |
| Computador 5 |  | 10 |  |
| Papel | Paquete de 500 Hojas | 15 |  |
| Impresora |  | 5 |  |
| Economista |  | 150 | 600 |

## Schedule

| ID | WBS | Task | Type | Duration | Start | Finish | Predecessors | Total slack | Free slack | Resources | Work | Cost |
| --- | --- | --- | --- | --- | --- | --- | --- | --- | --- | --- | --- | --- |
| 1 | 1 | Inicio de Sistema | milestone | 0d | 2016-03-01 | 2016-03-01 |  | 0d |  |  |  |  |
| 2 | 2 | **Estudio Preliminar** |  | 11d | 2016-03-01 | 2016-03-12 |  | 0d |  |  | 216h | 9,480 |
| 3 | 2.1 | Inicio de Estudio | milestone | 0d | 2016-03-01 | 2016-03-01 | 1 | 0d |  |  |  |  |
| 4 | 2.2 | Entrevista a Usuarios |  | 5d | 2016-03-01 | 2016-03-05 | 3 | 0d |  | Analista | 40h | 1,600 |
| 5 | 2.3 | Estudio de Factibilidad |  | 4d | 2016-03-07 | 2016-03-10 | 4 | 0d |  | Analista; Ing. De Sistemas; Computador 1; Computador 2 | 128h | 3,840 |
| 6 | 2.4 | Análisis Costo Beneficio |  | 2d | 2016-03-11 | 2016-03-12 | 5 | 0d |  | Ing. De Sistemas; Computador 1; Economista | 48h | 4,040 |
| 7 | 2.5 | Estudio Concluido | milestone | 0d | 2016-03-12 | 2016-03-12 | 6 | 0d |  |  |  |  |
| 8 | 3 | **Análisis de Sistemas** |  | 9d | 2016-03-12 | 2016-03-23 |  | 0d |  |  | 176h | 4,240 |
| 9 | 3.1 | Inicio de Analisis | milestone | 0d | 2016-03-12 | 2016-03-12 | 7 | 0d |  |  |  |  |
| 10 | 3.2 | Casos de Uso |  | 4d | 2016-03-14 | 2016-03-17 | 9 | 0d |  | Analista; Computador 2 | 64h | 1,760 |
| 11 | 3.3 | Modelamiento de Clases |  | 4d | 2016-03-18 | 2016-03-22 | 10 | 0d |  | Analista; Computador 2 | 64h | 1,760 |
| 12 | 3.4 | Elaboración de Informes |  | 3d | 2016-03-21 | 2016-03-23 | 11FF+1d | 0d |  | Digitador; Computador 4 | 48h | 720 |
| 13 | 3.5 | Analisis Concluido | milestone | 0d | 2016-03-23 | 2016-03-23 | 12 | 0d |  |  |  |  |
| 14 | 4 | **Diseño del Sistema** |  | 13d | 2016-03-23 | 2016-04-11 |  | 0d |  |  | 408h | 12,400 |
| 15 | 4.1 | Inicio de Diseño | milestone | 0d | 2016-03-23 | 2016-03-23 | 13 | 0d |  |  |  |  |
| 16 | 4.2 | Modelamiento de la BD |  | 6d | 2016-03-28 | 2016-04-02 | 15 | 0d |  | Ing. De Sistemas; Programador Senior; Computador 1; Computador 2 | 192h | 5,760 |
| 17 | 4.3 | Requerimientos del Usuario |  | 3d | 2016-03-28 | 2016-03-30 | 16SS | 3d |  | Analista; Computador 3 | 48h | 1,320 |
| 18 | 4.4 | Diseño de Entradas |  | 4d | 2016-04-04 | 2016-04-07 | 17, 16 | 0d |  | Analista; Programador Senior; Computador 3 | 96h | 3,040 |
| 19 | 4.5 | Diseño de Salidas |  | 3d | 2016-04-08 | 2016-04-11 | 18 | 0d |  | Analista; Programador Senior; Computador 3 | 72h | 2,280 |
| 20 | 4.6 | Diseño Concluido | milestone | 0d | 2016-04-11 | 2016-04-11 | 19 | 0d |  |  |  |  |
| 21 | 5 | **Programación** |  | 20d | 2016-04-11 | 2016-05-04 |  | 0d |  |  | 480h | 12,240 |
| 22 | 5.1 | Inicio de Programación | milestone | 0d | 2016-04-11 | 2016-04-11 | 20 | 0d |  |  |  |  |
| 23 | 5.2 | Procesos de negocio |  | 20d | 2016-04-12 | 2016-05-04 | 22 | 0d |  | Programador Senior; Computador 2 | 320h | 8,800 |
| 24 | 5.3 | Mantenimiento de tablas |  | 6d | 2016-04-12 | 2016-04-18 | 23SS | 10d | 0d | Programador Junior; Computador 3 | 96h | 2,160 |
| 25 | 5.4 | Reportes y consultas |  | 4d | 2016-04-19 | 2016-04-22 | 24 | 10d |  | Programador Junior; Computador 4 | 64h | 1,280 |
| 26 | 5.5 | Programación Concluida | milestone | 0d | 2016-05-04 | 2016-05-04 | 25, 23 | 0d |  |  |  |  |

| ID | WBS | Task | Type | Duration | Start | Finish | Predecessors | Total slack | Resources | Work | Cost |
| --- | --- | --- | --- | --- | --- | --- | --- | --- | --- | --- | --- |
| 27 | 6 | **Pruebas del Sistema** |  | 16d | 2016-04-30 | 2016-05-18 |  | 0d |  | 440h | 9,640 |
| 28 | 6.1 | Inicio de Pruebas | milestone | 0d | 2016-04-30 | 2016-04-30 | 26FS-4d | 0d |  |  |  |
| 29 | 6.2 | Pruebas Modulares |  | 5d | 2016-04-30 | 2016-05-05 | 28 | 0d | Programador Junior; Operador; Computador 3; Computador 4 | 160h | 3,200 |
| 30 | 6.3 | Pruebas Integrales |  | 3d | 2016-05-06 | 2016-05-09 | 29 | 0d | Programador Junior; Operador; Computador 4 | 72h | 1,560 |
| 31 | 6.4 | Correcciones |  | 4d | 2016-05-07 | 2016-05-11 | 30FS-2d | 0d | Programador Senior; Computador 1 | 64h | 1,760 |
| 32 | 6.5 | Elaboración de Manuales |  | 6d | 2016-05-12 | 2016-05-18 | 31 | 0d | Digitador; Programador Junior; Computador 3 | 144h | 3,120 |
| 33 | 6.6 | Sistema Probado | milestone | 0d | 2016-05-18 | 2016-05-18 | 32 | 0d |  |  |  |
| 34 | 7 | **Puesta en Marcha** |  | 8d | 2016-05-18 | 2016-05-27 |  | 0d |  | 224h | 7,200 |
| 35 | 7.1 | Inicio de Puesta en Marcha | milestone | 0d | 2016-05-18 | 2016-05-18 | 33 | 0d |  |  |  |
| 36 | 7.2 | Instalación del sistema |  | 2d | 2016-05-19 | 2016-05-20 | 35 | 0d | Asistente; Computador 5 | 32h | 480 |
| 37 | 7.3 | Capacitación al usuario |  | 8d | 2016-05-19 | 2016-05-27 | 36SS | 0d | Ing. De Sistemas; Programador Senior; Computador 1 | 192h | 6,720 |
| 38 | 7.4 | Sistema en Producción | milestone | 0d | 2016-05-27 | 2016-05-27 | 37 | 0d |  |  |  |
| 39 | 8 | Sistema Concluido | milestone | 0d | 2016-05-27 | 2016-05-27 | 38 | 0d |  |  |  |
